# Capstone_Project

Schedule from MS Project, 2026-08-10 to 2026-12-07, status date 2026-09-12.

## Calendars

- Estándar: Mon-Fri 09:00-13:00, 15:00-19:00; Sat-Sun off. Exceptions (off unless hours are given): 2026-09-18 (Fiestas Patrias), 2026-10-12 09:00-13:00, 15:00-19:00.

## Resources

| Resource |
| --- |
| Nicolás Chiguay, Mathias Jara, Gabriel Valderas |
| Nicolás Chiguay |
| Mathias Jara, Gabriel Valderas |
| Gabriel Valderas |
| Mathias Jara, Nicolás Chiguay |
| Mathias Jara |
| Nicolás Chiguay, Gabriel Valderas |
| Gabriel Valderas, Mathias Jara |
| Nicolás Chiguay, Gabriel Valderas, Mathias Jara |

## Schedule

| ID | WBS | Task | Type | Duration | Start | Finish | Predecessors | Total slack | Free slack | Constraint | Deadline | Resources | Work |
| --- | --- | --- | --- | --- | --- | --- | --- | --- | --- | --- | --- | --- | --- |
| 1 | 1 | **FASE 1: DEFINICIÓN PROYECTO CAPSTONE** |  | 15d | 2026-08-10 | 2026-08-31 |  | -5d | 0d |  |  |  | 184h |
| 2 | 1.1 | Levantar requerimientos, matriz APT y alcance MVP |  | 4d | 2026-08-10 | 2026-08-13 |  | -5d | 0d |  |  | Nicolás Chiguay, Mathias Jara, Gabriel Valderas | 32h |
| 3 | 1.2 | Elaborar Pauta de Reflexión, Autoevaluación y Guía 1 |  | 4d | 2026-08-14 | 2026-08-19 | 2 | -3d | 0d |  |  | Nicolás Chiguay | 32h |
| 4 | 1.3 | Diseñar arquitectura UX/UI, flujos y maquetación de pantallas |  | 6d | 2026-08-14 | 2026-08-21 | 2 | -5d | 0d |  |  | Nicolás Chiguay | 48h |
| 5 | 1.4 | Configurar repositorio GitHub y entorno en Flutter/Supabase |  | 4d | 2026-08-14 | 2026-08-19 | 2 | -3d | 0d |  |  | Mathias Jara, Gabriel Valderas | 32h |
| 6 | 1.5 | Consolidación de informe Fase 1 y preparación de presentación |  | 5d | 2026-08-24 | 2026-08-28 | 3, 4, 5 | -5d | 0d |  |  | Nicolás Chiguay, Mathias Jara, Gabriel Valderas | 40h |
| 7 | 1.6 | HITO 1: Entrega y Presentación Fase 1 (20%) | milestone | 0d | 2026-08-31 | 2026-08-31 | 6 | -5d | 0d | start no earlier than 2026-08-31 |  |  |  |
| 8 | 2 | **FASE 2: DESARROLLO E INTEGRACIÓN TÉCNICA** |  | 59d | 2026-08-31 | 2026-11-23 |  | -5d | 0d |  |  |  | 712h |
| 9 | 2.1 | **Infraestructura de Datos y Backend (Supabase/PostgreSQL)** |  | 25d | 2026-08-31 | 2026-10-05 |  | -1d | 0d |  |  |  | 200h |
| 10 | 2.1.1 | Diseñar modelo ER y crear tablas (Usuarios, Ofertas, Trabajos, Pagos) |  | 10d | 2026-08-31 | 2026-09-11 | 7 | -1d | 0d |  |  | Gabriel Valderas | 80h |
| 11 | 2.1.2 | Implementar autenticación por roles (Cliente/Especialista) |  | 5d | 2026-09-14 | 2026-09-21 | 10 | -1d | 0d |  |  | Gabriel Valderas | 40h |
| 12 | 2.1.3 | Configurar políticas de seguridad perimetral Row Level Security (RLS) |  | 10d | 2026-09-22 | 2026-10-05 | 11 | -1d | 0d |  |  | Gabriel Valderas | 80h |
| 13 | 2.2 | **Desarrollo Frontend Móvil (Flutter Core)** |  | 29d | 2026-08-31 | 2026-10-09 |  | -5d | 0d |  |  |  | 232h |
| 14 | 2.2.1 | Implementar vistas de registro, inicio de sesión y perfil por rol |  | 10d | 2026-08-31 | 2026-09-11 | 7 | -5d | 0d |  |  | Mathias Jara, Nicolás Chiguay | 80h |
| 15 | 2.2.2 | Construir vistas de publicación de servicios y catálogo técnico |  | 9d | 2026-09-14 | 2026-09-25 | 14 | -5d | 0d | finish no earlier than 2026-09-25 |  | Mathias Jara | 72h |
| 16 | 2.2.3 | Desarrollar máquina de estados del servicio (Solicitado, En Proceso, Finalizado) |  | 10d | 2026-09-28 | 2026-10-09 | 15 | -5d | 0d |  |  | Mathias Jara | 80h |
| 17 | 2.3 | **Avance de Desarrollo y Primer Informe** |  | 5d | 2026-10-05 | 2026-10-09 |  |  |  |  |  |  | 40h |
| 18 | 2.3.1 | Elaboración de Informe de Avance y compilación de evidencias | manual | 5d | 2026-10-05 | 2026-10-09 | 12, 16 |  |  | start no earlier than 2026-10-05 | 2026-10-09 | Nicolás Chiguay | 40h |
| 19 | 2.3.2 | HITO 2: Entrega Informe de Avance Fase 2 (20%) | milestone | 0d | 2026-10-12 | 2026-10-12 | 18 | 5d | 0d | start no earlier than 2026-10-12 |  |  |  |
| 20 | 2.4 | **Lógica Transaccional, Pruebas y Cierre Fase 2** |  | 25d | 2026-10-12 | 2026-11-13 |  | 5d |  |  |  |  | 240h |
| 21 | 2.4.1 | Desarrollar módulo de pago simulado y retención de fondos (PaymentService Escrow) |  | 10d | 2026-10-12 | 2026-10-23 | 19 | 5d | 0d |  |  | Mathias Jara, Gabriel Valderas | 80h |
| 22 | 2.4.2 | Integrar registro de evidencias de trabajo (fotos/comprobantes) |  | 5d | 2026-10-26 | 2026-10-30 | 21 | 5d | 0d |  |  | Mathias Jara | 40h |
| 23 | 2.4.3 | Diseñar y ejecutar matriz de pruebas de integración e interfaces (QA) |  | 5d | 2026-11-02 | 2026-11-06 | 22 | 5d | 0d |  |  | Nicolás Chiguay, Gabriel Valderas | 40h |
| 24 | 2.4.4 | Corrección de fallos y optimización final de la aplicación |  | 5d | 2026-11-09 | 2026-11-13 | 23 | 5d |  |  |  | Gabriel Valderas, Mathias Jara | 40h |
| 25 | 2.4.5 | Redacción e integración del Informe Final del Proyecto APT |  | 5d | 2026-11-09 | 2026-11-13 | 23 | 5d |  |  |  | Nicolás Chiguay | 40h |
| 26 | 2.5 | HITO 3: Entrega e Informe Final Fase 2 (30%) | milestone | 0d | 2026-11-23 | 2026-11-23 | 24, 25 | 0d |  | start no earlier than 2026-11-23 |  |  |  |

| ID | WBS | Task | Type | Duration | Start | Finish | Predecessors | Total slack | Constraint | Resources | Work |
| --- | --- | --- | --- | --- | --- | --- | --- | --- | --- | --- | --- |
| 27 | 3 | **FASE 3: CIERRE Y DEFENSA ANTE COMISIÓN** |  | 10d | 2026-11-23 | 2026-12-07 |  | 0d |  |  | 120h |
| 28 | 3.1 | Confeccionar manuales técnicos, guía de usuario y paquete de despliegue |  | 5d | 2026-11-23 | 2026-11-27 | 26 | 0d |  | Nicolás Chiguay | 40h |
| 29 | 3.2 | Preparación del material audiovisual y presentación ejecutiva |  | 5d | 2026-11-23 | 2026-11-27 | 26 | 0d |  | Nicolás Chiguay, Gabriel Valderas, Mathias Jara | 40h |
| 30 | 3.3 | Ensayos de demostración en vivo del software (Demo MVP) y ronda de preguntas |  | 5d | 2026-11-30 | 2026-12-04 | 28, 29 | 0d |  | Nicolás Chiguay, Gabriel Valderas, Mathias Jara | 40h |
| 31 | 3.4 | HITO 4: Presentación Final ante Comisión Evaluadora (30%) | milestone | 0d | 2026-12-07 | 2026-12-07 | 30 | 0d | start no earlier than 2026-12-07 |  |  |
